# Cronograma Drinks

Schedule from MS Project, 2016-05-11 to 2016-06-29, costs in R$, A marks actual dates.

## Calendars

- Padrão: Mon-Fri 09:00-12:00, 13:00-18:00; Sat-Sun off.

## Resources

| Resource | Rate |
| --- | --- |
| Adriana | 150 |
| Beatriz | 150 |
| Cliente |  |
| GP Externo | 200 |
| Gabriela | 150 |
| Tiago |  |
| Desenvolvedor de código | 100 |

## Schedule

| ID | WBS | Task | Type | Duration | Start | Finish | Predecessors | Complete | Remaining | Actual start | Actual finish | Baseline start | Baseline finish | Baseline duration | Resources | Work | Actual work | Cost | Baseline cost | Actual cost |
| --- | --- | --- | --- | --- | --- | --- | --- | --- | --- | --- | --- | --- | --- | --- | --- | --- | --- | --- | --- | --- |
| 1 | 1 | **Drinks** |  | 36d | 2016-05-11 09:00 A | 2016-06-29 18:00 |  | 63% | 13.32d |  |  | 2016-05-11 09:00 | 2016-06-29 18:00 | 36d |  | 244.77h | 139.5h | 26,745.03 | 27,796.05 | 15,050.03 |
| 2 | 1.1 | **Prospecção** |  | 8d | 2016-05-11 09:00 A | 2016-05-20 18:00 A |  | 100% |  |  |  | 2016-05-11 09:00 | 2016-05-20 18:00 | 8d |  | 28h | 28h | 3,950 | 4,700 | 3,950 |
| 3 | 1.1.1 | **PTEC** |  | 6d | 2016-05-11 09:00 A | 2016-05-18 18:00 |  | 100% |  |  | 2016-05-18 17:00 | 2016-05-11 09:00 | 2016-05-18 18:00 | 6d |  | 25h | 25h | 3,600 | 4,350 | 3,600 |
| 4 | 1.1.1.1 | Estudar Domínio de Aplicação | manual | 0.12d | 2016-05-11 09:00 A | 2016-05-11 15:00 A |  | 100% |  |  |  | 2016-05-11 09:00 | 2016-05-11 16:00 | 0.25d | Gabriela | 1h | 1h | 150 | 300 | 150 |
| 5 | 1.1.1.2 | Reunir-se com fornecedor de Requisitos | manual | 0.12d | 2016-05-11 16:00 A | 2016-05-12 12:00 A | 4 | 100% |  |  |  | 2016-05-11 16:00 | 2016-05-12 17:00 | 0.62d | Gabriela | 1h | 1h | 150 | 750 | 150 |
| 6 | 1.1.1.3 | Redigir PTEC |  | 2.75d | 2016-05-12 17:00 A | 2016-05-16 12:00 A | 5 | 100% |  |  |  | 2016-05-12 17:00 | 2016-05-16 12:00 | 2.75d | Gabriela | 22h | 22h | 3,300 | 3,300 | 3,300 |
| 7 | 1.1.1.4 | Revisar Proposta Tecnica | manual | 0.12d | 2016-05-18 16:00 A | 2016-05-18 17:00 A | 6 | 100% |  |  |  | 2016-05-18 16:00 | 2016-05-18 17:00 | 0.12d | Tiago | 1h | 1h |  |  |  |
| 8 | 1.1.1.5 | Aprovar PTEC | milestone, manual | 0d | 2016-05-18 17:00 A | 2016-05-18 17:00 A | 7 | 100% |  |  |  | 2016-05-18 17:00 | 2016-05-18 17:00 |  | Cliente |  |  |  |  |  |
| 9 | 1.1.2 | **Estimativa Preliminar de Tamanho** |  | 1d | 2016-05-20 09:00 A | 2016-05-20 18:00 |  | 100% |  |  | 2016-05-20 15:00 | 2016-05-20 09:00 | 2016-05-20 18:00 | 1d |  | 2h | 2h | 350 | 350 | 350 |
| 10 | 1.1.2.1 | Estimar Tamanho do Projeto | manual | 0.12d | 2016-05-20 09:00 A | 2016-05-20 10:00 A | 8 | 100% |  |  |  | 2016-05-20 09:00 | 2016-05-20 10:00 | 0.12d | Adriana | 1h | 1h | 150 | 150 | 150 |
| 11 | 1.1.2.2 | Revisar Estimativa de tamanho do Projeto | manual | 0.12d | 2016-05-20 14:00 A | 2016-05-20 15:00 A | 10 | 100% |  |  |  | 2016-05-20 14:00 | 2016-05-20 15:00 | 0.12d | GP Externo | 1h | 1h | 200 | 200 | 200 |
| 12 | 1.1.3 | **Estimativa Preliminar de Cronograma e Orçamento** |  | 8d | 2016-05-11 09:00 | 2016-05-20 18:00 A |  | 100% |  | 2016-05-20 09:00 |  | 2016-05-11 09:00 | 2016-05-11 14:00 | 0.5d? |  | 1h | 1h |  |  |  |
| 13 | 1.1.3.1 | Elaborar Cronograma e Orçamento Preliminares | milestone, manual | 0d | 2016-05-20 18:00 A | 2016-05-20 18:00 A | 9 | 100% |  |  |  | 2016-05-20 18:00 | 2016-05-20 18:00 |  | Beatriz |  |  |  |  |  |
| 14 | 1.1.3.2 | Revisar cronograma e Orçamento Preliminares | manual | 0.12d | 2016-05-20 09:00 A | 2016-05-20 10:00 A | 13 | 100% |  |  |  | 2016-05-20 09:00 | 2016-05-20 10:00 | 0.12d | Tiago | 1h | 1h |  |  |  |
| 15 | 1.2 | **Análise** |  | 6d | 2016-05-20 09:00 | 2016-05-27 18:00 |  | 100% |  | 2016-05-20 14:00 | 2016-05-31 11:00 | 2016-05-20 09:00 | 2016-05-27 18:00 | 6d |  | 32h | 32h | 2,900.03 | 3,200 | 2,900.03 |
| 16 | 1.2.1 | **Documento de Requisitos** |  | 4d | 2016-05-20 09:00 | 2016-05-25 18:00 |  | 100% |  | 2016-05-20 14:00 | 2016-05-25 15:00 | 2016-05-20 09:00 | 2016-05-25 18:00 | 4d |  | 24h | 24h | 1,700 | 1,700 | 1,700 |
| 17 | 1.2.1.1 | Reunir-se com o Cliente | manual | 1.12d | 2016-05-20 14:00 A | 2016-05-23 15:00 A |  | 100% |  |  |  | 2016-05-20 14:00 | 2016-05-23 15:00 | 1.12d | Tiago | 8h | 8h |  |  |  |
| 18 | 1.2.1.2 | Elaborar DRE | manual | 1.12d | 2016-05-24 17:00 A | 2016-05-25 08:00 A | 17 | 100% |  |  |  | 2016-05-24 17:00 | 2016-05-25 08:00 | 1.12d | Desenvolvedor de código | 14h | 14h | 1,400 | 1,400 | 1,400 |
| 19 | 1.2.1.3 | Revisar DRE | manual | 0.25d | 2016-05-25 13:00 A | 2016-05-25 15:00 A | 18 | 100% |  |  |  | 2016-05-25 13:00 | 2016-05-25 15:00 | 0.25d | Beatriz | 2h | 2h | 300 | 300 | 300 |
| 20 | 1.2.1.4 | Submeter DRE para aprovação do Cliente | milestone, manual | 0d | 2016-05-25 15:00 A | 2016-05-25 15:00 A | 19 | 100% |  |  |  | 2016-05-25 15:00 | 2016-05-25 15:00 |  | Cliente |  |  |  |  |  |
| 21 | 1.2.2 | **Matriz de Rastreabilidade** |  | 3.25d | 2016-05-26 09:00 A | 2016-05-31 11:00 A |  | 100% |  |  |  | 2016-05-26 09:00 | 2016-05-31 11:00 | 3.25d |  | 8h | 8h | 1,200.03 | 1,500 | 1,200.03 |
| 22 | 1.2.2.1 | Analisar DRE | manual | 0.25d | 2016-05-26 09:00 A | 2016-05-26 16:00 A | 16 | 100% |  |  |  | 2016-05-26 09:00 | 2016-05-26 16:00 | 0.25d | Adriana | 2h | 2h | 300 | 300 | 300 |
| 23 | 1.2.2.2 | Desenvolver Matriz de Rastreabilidade | manual | 0.92d | 2016-05-26 16:00 A | 2016-05-30 10:23 A | 22 | 100% |  |  |  | 2016-05-26 16:00 | 2016-05-30 18:00 | 1.75d | Adriana | 4h | 4h | 600.03 | 900 | 600.03 |
| 24 | 1.2.2.3 | Revisar Matriz de Rastreabilidade | manual | 0.12d | 2016-05-30 18:00 | 2016-05-31 11:00 A | 23 | 100% |  | 2016-05-31 09:00 |  | 2016-05-31 09:00 | 2016-05-31 11:00 | 0.12d | Beatriz | 2h | 2h | 300 | 300 | 300 |

| ID | WBS | Task | Type | Duration | Start | Finish | Predecessors | Complete | Remaining | Actual start | Actual finish | Baseline start | Baseline finish | Baseline duration | Total slack | Resources | Work | Actual work | Cost | Baseline cost | Actual cost |
| --- | --- | --- | --- | --- | --- | --- | --- | --- | --- | --- | --- | --- | --- | --- | --- | --- | --- | --- | --- | --- | --- |
| 25 | 1.3 | **Projeto** |  | 6.62d | 2016-05-31 13:00 A | 2016-06-08 18:00 A |  | 100% |  |  |  | 2016-05-31 13:00 | 2016-06-08 18:00 | 6.62d |  |  | 18h | 18h | 2,700 | 2,700 | 2,700 |
| 26 | 1.3.1 | **Diagrama de Classes** |  | 6.62d | 2016-05-31 13:00 A | 2016-06-08 18:00 A |  | 100% |  |  |  | 2016-05-31 13:00 | 2016-06-08 18:00 | 6.62d |  |  | 18h | 18h | 2,700 | 2,700 | 2,700 |
| 27 | 1.3.1.1 | Elaborar Diagrama de Classes | manual | 4.25d | 2016-05-31 13:00 A | 2016-06-04 15:00 A | 24 | 100% |  |  |  | 2016-05-31 13:00 | 2016-06-04 15:00 | 4.25d |  | Gabriela | 16h | 16h | 2,400 | 2,400 | 2,400 |
| 28 | 1.3.1.2 | Revisar Diagrama de Classes | manual | 0.25d | 2016-06-08 08:00 A | 2016-06-08 10:00 A | 27 | 100% |  |  |  | 2016-06-08 08:00 | 2016-06-08 10:00 | 0.25d |  | Adriana | 2h | 2h | 300 | 300 | 300 |
| 29 | 1.3.1.3 | Atualizar MRB | milestone, manual | 0d | 2016-06-08 18:00 A | 2016-06-08 18:00 A | 27 | 100% |  |  |  | 2016-06-08 18:00 | 2016-06-08 18:00 |  |  | Tiago |  |  |  |  |  |
| 30 | 1.4 | **Modelo Entidade de Relacionamento** |  | 2d | 2016-06-09 07:00 A | 2016-06-11 10:00 A |  | 100% |  |  |  | 2016-06-09 07:00 | 2016-06-11 10:00 | 2d |  |  | 7h | 7h | 750 | 750 | 750 |
| 31 | 1.4.1 | Elaborar MER | manual | 0.38d | 2016-06-09 07:00 A | 2016-06-09 10:00 A | 26 | 100% |  |  |  | 2016-06-09 07:00 | 2016-06-09 10:00 | 0.38d |  | Adriana; Tiago | 5h | 5h | 450 | 450 | 450 |
| 32 | 1.4.2 | Revisar MER | manual | 1.75d | 2016-06-09 13:00 A | 2016-06-11 10:00 A | 31 | 100% |  |  |  | 2016-06-09 13:00 | 2016-06-11 10:00 | 1.75d |  | Gabriela | 2h | 2h | 300 | 300 | 300 |
| 33 | 1.5 | **Implementação** |  | 31.56d | 2016-05-11 09:00 A | 2016-06-23 14:30 |  | 39% | 19.29d |  |  | 2016-05-11 09:00 | 2016-06-23 14:30 | 31.56d | 0d |  | 159.77h | 54.5h | 16,445 | 16,446.05 | 4,750 |
| 34 | 1.5.1 | **Implementação 01** |  | 3d | 2016-06-10 13:00 A | 2016-06-15 12:00 A |  | 100% |  |  |  | 2016-06-10 13:00 | 2016-06-15 12:00 | 3d |  |  | 21.5h | 21.5h | 2,125 | 2,125 | 2,125 |
| 35 | 1.5.1.1 | **Implementação RFC01** |  | 1.75d | 2016-06-10 13:00 A | 2016-06-14 10:00 A |  | 100% |  |  |  | 2016-06-10 13:00 | 2016-06-14 10:00 | 1.75d |  |  | 16h | 16h | 1,600 | 1,600 | 1,600 |
| 36 | 1.5.1.1.1 | Implementar RFS01 | manual | 0.5d | 2016-06-10 13:00 A | 2016-06-10 17:00 A | 32 | 100% |  |  |  | 2016-06-10 13:00 | 2016-06-10 17:00 | 0.5d |  | Desenvolvedor de código | 4h | 4h | 400 | 400 | 400 |
| 37 | 1.5.1.1.2 | Implementar RFS02 | manual | 0.62d | 2016-06-10 17:00 A | 2016-06-11 14:00 A | 36 | 100% |  |  |  | 2016-06-10 17:00 | 2016-06-11 14:00 | 0.62d |  | Desenvolvedor de código | 4h | 4h | 400 | 400 | 400 |
| 38 | 1.5.1.1.3 | Implementar RFS03 | manual | 0.5d | 2016-06-13 13:00 A | 2016-06-13 17:00 A | 37 | 100% |  |  |  | 2016-06-13 13:00 | 2016-06-13 17:00 | 0.5d |  | Desenvolvedor de código | 4h | 4h | 400 | 400 | 400 |
| 39 | 1.5.1.1.4 | Implementar RFS04 | manual | 0.25d | 2016-06-13 17:00 A | 2016-06-14 10:00 A | 38 | 100% |  |  |  | 2016-06-13 17:00 | 2016-06-14 10:00 | 0.25d |  | Desenvolvedor de código | 4h | 4h | 400 | 400 | 400 |
| 40 | 1.5.1.2 | **Implementação RFC05** |  | 2.62d | 2016-06-10 13:00 | 2016-06-14 18:00 |  | 100% |  | 2016-06-11 10:00 | 2016-06-11 16:00 | 2016-06-10 13:00 | 2016-06-14 18:00 | 2.62d |  |  | 1.5h | 1.5h | 225 | 225 | 225 |
| 41 | 1.5.1.2.1 | Implementar RFS013 | manual | 0.25d | 2016-06-11 10:00 A | 2016-06-11 16:00 A | 32 | 100% |  |  |  | 2016-06-11 10:00 | 2016-06-11 16:00 | 0.25d |  | Gabriela | 1.5h | 1.5h | 225 | 225 | 225 |
| 42 | 1.5.1.3 | **Teste** |  | 2.25d | 2016-06-13 10:00 A | 2016-06-15 12:00 A |  | 100% |  |  |  | 2016-06-13 10:00 | 2016-06-15 12:00 | 2.25d |  |  | 4h | 4h | 300 | 300 | 300 |
| 43 | 1.5.1.3.1 | Teste RFC01 | manual | 0.88d | 2016-06-14 14:00 A | 2016-06-15 12:00 A | 39 | 100% |  |  |  | 2016-06-14 14:00 | 2016-06-15 12:00 | 0.88d |  | Adriana | 2h | 2h | 300 | 300 | 300 |
| 44 | 1.5.1.3.2 | Teste RFC05 | manual | 0.88d | 2016-06-13 10:00 A | 2016-06-14 09:00 A | 41 | 100% |  |  |  | 2016-06-13 10:00 | 2016-06-14 09:00 | 0.88d |  | Tiago | 2h | 2h |  |  |  |
| 45 | 1.5.2 | **Implementação 02** |  | 2.38d | 2016-06-11 10:00 A | 2016-06-15 12:00 A |  | 100% |  |  |  | 2016-06-11 10:00 | 2016-06-15 12:00 | 2.38d |  |  | 15h | 15h | 1,200 | 1,200 | 1,200 |
| 46 | 1.5.2.1 | **Implementação RFC06** |  | 0d | 2016-06-11 10:00 A | 2016-06-11 18:00 A |  | 100% |  |  |  | 2016-06-11 10:00 | 2016-06-11 18:00 |  |  |  | 7h | 7h |  |  |  |
| 47 | 1.5.2.1.1 | Implementar RFS014 | manual | 0.88d | 2016-06-11 10:00 A | 2016-06-11 18:00 A | 32 | 100% |  |  |  | 2016-06-11 10:00 | 2016-06-11 18:00 | 0.88d |  | Tiago | 7h | 7h |  |  |  |
| 48 | 1.5.2.2 | **Implementação RFC08** |  | 1d | 2016-06-13 13:00 A | 2016-06-14 12:00 A |  | 100% |  |  |  | 2016-06-13 13:00 | 2016-06-14 12:00 | 1d |  |  | 4h | 4h | 600 | 600 | 600 |
| 49 | 1.5.2.2.1 | Implementar RFS018 | manual | 0.62d | 2016-06-13 13:00 A | 2016-06-14 12:00 A | 32 | 100% |  |  |  | 2016-06-13 13:00 | 2016-06-14 12:00 | 0.62d |  | Beatriz | 4h | 4h | 600 | 600 | 600 |

| ID | WBS | Task | Type | Duration | Start | Finish | Predecessors | Complete | Baseline start | Baseline finish | Baseline duration | Total slack | Resources | Work | Actual work | Cost | Baseline cost | Actual cost |
| --- | --- | --- | --- | --- | --- | --- | --- | --- | --- | --- | --- | --- | --- | --- | --- | --- | --- | --- |
| 50 | 1.5.2.3 | **Teste** |  | 1.88d | 2016-06-13 14:00 A | 2016-06-15 12:00 A |  | 100% | 2016-06-13 14:00 | 2016-06-15 12:00 | 1.88d |  |  | 4h | 4h | 600 | 600 | 600 |
| 51 | 1.5.2.3.1 | Teste RFC06 | manual | 0.88d | 2016-06-13 14:00 A | 2016-06-14 12:00 A | 47 | 100% | 2016-06-13 14:00 | 2016-06-14 12:00 | 0.88d |  | Adriana | 2h | 2h | 300 | 300 | 300 |
| 52 | 1.5.2.3.2 | Teste RFC08 | manual | 1d | 2016-06-14 13:00 A | 2016-06-15 12:00 A | 49 | 100% | 2016-06-14 13:00 | 2016-06-15 12:00 | 1d |  | Beatriz | 2h | 2h | 300 | 300 | 300 |
| 53 | 1.5.3 | **Implementação 03** |  | 3.75d | 2016-06-13 14:00 | 2016-06-17 11:00 |  |  | 2016-05-13 09:00 | 2016-06-17 11:00 | 25.25d | 0d |  | 25h |  | 2,200 | 5,121.05 |  |
| 54 | 1.5.3.1 | **Implementação RFC04** |  | 1d | 2016-06-16 09:00 | 2016-06-16 18:00 |  |  | 2016-06-16 09:00 | 2016-06-16 18:00 | 1d | 0d |  | 8h |  | 800 | 800 |  |
| 55 | 1.5.3.1.1 | Implementar RFS12 | manual | 1d | 2016-06-16 09:00 | 2016-06-16 18:00 | 67 |  | 2016-06-16 09:00 | 2016-06-16 18:00 | 1d |  | Desenvolvedor de código | 8h |  | 800 | 800 |  |
| 56 | 1.5.3.2 | **Implementação RFC09** |  | 0.62d | 2016-06-13 14:00 | 2016-06-14 10:00 |  |  | 2016-06-13 14:00 | 2016-06-14 10:00 | 0.62d | 0d |  | 13h |  | 900 | 900 |  |
| 57 | 1.5.3.2.1 | Implementar RFS19 | manual | 0.62d | 2016-06-13 14:00 | 2016-06-14 10:00 | 67 |  | 2016-06-13 14:00 | 2016-06-14 10:00 | 0.62d |  | Adriana | 6h |  | 900 | 900 |  |
| 58 | 1.5.3.2.2 | Implementar RFS20 | manual | 0.62d | 2016-06-13 14:00 | 2016-06-14 10:00 | 67 |  | 2016-06-13 14:00 | 2016-06-14 10:00 | 0.62d |  | Tiago | 7h |  |  |  |  |
| 59 | 1.5.3.3 | **Teste** |  | 2.88d | 2016-06-14 13:00 | 2016-06-17 11:00 |  |  | 2016-06-13 14:00 | 2016-06-17 11:00 | 3.75d | 0d |  | 4h |  | 500 | 2,600 |  |
| 60 | 1.5.3.3.1 | Teste RFC04 | manual | 0.25d | 2016-06-17 09:00 | 2016-06-17 11:00 | 55 |  | 2016-06-17 09:00 | 2016-06-17 11:00 | 0.25d |  | Desenvolvedor de código | 2h |  | 200 | 200 |  |
| 61 | 1.5.3.3.2 | Teste RFC09 | manual | 0.25d | 2016-06-14 13:00 | 2016-06-14 17:00 | 58 |  | 2016-06-14 13:00 | 2016-06-14 17:00 | 0.25d |  | Beatriz | 2h |  | 300 | 300 |  |
| 62 | 1.5.4 | **Implementação 04** |  | 28d | 2016-05-13 09:00 | 2016-06-21 18:00 |  |  | 2016-06-14 17:00 | 2016-06-21 18:00 | 5.12d | 0d |  | 60.27h |  | 7,320 | 4,400 |  |
| 63 | 1.5.4.1 | **Implementação RFC02** |  | 25d | 2016-05-13 09:00 | 2016-06-16 18:00 |  |  | 2016-05-13 09:00 | 2016-06-16 18:00 | 25d |  |  | 10.27h |  | 820 | 821.05 |  |
| 64 | 1.5.4.1.1 | Implementar RFS05 | milestone, manual | 0d | 2016-06-15 13:00 | 2016-06-15 13:00 | 52 |  | 2016-06-15 13:00 | 2016-06-15 13:00 | 0d |  | Desenvolvedor de código |  |  |  |  |  |
| 65 | 1.5.4.1.2 | Implementar RFS06 | manual | 1.62d | 2016-06-11 10:00 | 2016-06-13 06:00 | 32 |  | 2016-06-11 10:00 | 2016-06-13 06:00 | 1.62d |  | Desenvolvedor de código | 6h |  | 600 | 600 |  |
| 66 | 1.5.4.1.3 | Implementar RFS07 | manual | 1d | 2016-06-13 08:00 | 2016-06-13 17:00 | 32 |  | 2016-06-13 08:00 | 2016-06-13 17:00 | 1d |  | Adriana | 1.47h |  | 220 | 221.05 |  |
| 67 | 1.5.4.1.4 | Implementar RFS08 | manual | 0.88d | 2016-06-11 10:00 | 2016-06-11 18:00 | 32 |  | 2016-06-11 10:00 | 2016-06-11 18:00 | 0.88d |  | Tiago | 2.8h |  |  |  |  |
| 68 | 1.5.4.2 | **Implementação RFC03** |  | 1.5d | 2016-06-14 17:00 | 2016-06-16 12:00 |  |  | 2016-06-14 17:00 | 2016-06-16 12:00 | 1.5d | 0d |  | 14h |  | 1,000 | 1,000 |  |
| 69 | 1.5.4.2.1 | Implementar RFS09 | manual | 0.5d | 2016-06-14 17:00 | 2016-06-15 12:00 | 61 |  | 2016-06-14 17:00 | 2016-06-15 12:00 | 0.5d |  | Tiago | 6h |  |  |  |  |
| 70 | 1.5.4.2.2 | Implementar RFS10 | manual | 0.5d | 2016-06-15 14:00 | 2016-06-15 18:00 | 69 |  | 2016-06-15 14:00 | 2016-06-15 18:00 | 0.5d |  | Desenvolvedor de código | 4h |  | 400 | 400 |  |
| 71 | 1.5.4.2.3 | Implementar RFS11 | manual | 0.62d | 2016-06-16 08:00 | 2016-06-16 14:00 | 70 |  | 2016-06-16 08:00 | 2016-06-16 12:00 | 0.5d |  | Adriana | 4h |  | 600 | 600 |  |
| 72 | 1.5.4.3 | **Implementação RFC07** |  | 2.75d | 2016-06-14 17:00 | 2016-06-17 15:00 |  |  | 2016-06-14 17:00 | 2016-06-17 15:00 | 2.75d | 0d |  | 15h |  | 2,250 | 2,250 |  |
| 73 | 1.5.4.3.1 | Implementar RFS15 | manual | 0.62d | 2016-06-14 17:00 | 2016-06-15 17:00 | 61 |  | 2016-06-14 17:00 | 2016-06-15 17:00 | 0.62d |  | Gabriela | 5h |  | 750 | 750 |  |
| 74 | 1.5.4.3.2 | Implementar RFS16 | manual | 0.62d | 2016-06-15 16:00 | 2016-06-16 16:00 | 73 |  | 2016-06-15 16:00 | 2016-06-16 16:00 | 0.62d |  | Gabriela | 5h |  | 750 | 750 |  |
| 75 | 1.5.4.3.3 | Implementar RFS17 | manual | 0.5d | 2016-06-16 16:00 | 2016-06-17 15:00 | 74 |  | 2016-06-16 16:00 | 2016-06-17 15:00 | 0.5d |  | Beatriz | 5h |  | 750 | 750 |  |

| ID | WBS | Task | Type | Duration | Start | Finish | Predecessors | Complete | Remaining | Baseline start | Baseline finish | Baseline duration | Total slack | Resources | Work | Actual work | Cost | Baseline cost | Actual cost |
| --- | --- | --- | --- | --- | --- | --- | --- | --- | --- | --- | --- | --- | --- | --- | --- | --- | --- | --- | --- |
| 76 | 1.5.4.4 | **Teste** |  | 6.5d | 2016-06-13 14:00 | 2016-06-21 18:00 |  |  |  | 2016-06-21 09:00 | 2016-06-21 18:00 | 1d | 0d |  | 21h |  | 3,250 | 1,150 |  |
| 77 | 1.5.4.4.1 | Teste RFC02 | manual | 1.5d | 2016-06-13 14:00 | 2016-06-14 18:00 | 67 |  |  | 2016-06-13 14:00 | 2016-06-14 18:00 | 1.5d |  | Gabriela | 14h |  | 2,100 | 2,100 |  |
| 78 | 1.5.4.4.2 | Teste RFC03 | manual | 0.25d | 2016-06-21 09:00 | 2016-06-21 15:00 | 71 |  |  | 2016-06-21 09:00 | 2016-06-21 15:00 | 0.25d |  | GP Externo | 2h |  | 400 | 400 |  |
| 79 | 1.5.4.4.3 | TesteRFC07 | manual | 0.62d | 2016-06-21 09:00 | 2016-06-21 18:00 | 75 |  |  | 2016-06-21 09:00 | 2016-06-21 18:00 | 0.62d |  | Beatriz | 5h |  | 750 | 750 |  |
| 80 | 1.5.5 | **Monitoramento e Controle** |  | 1d | 2016-05-11 09:00 A | 2016-05-11 18:00 |  | 50% | 0.5d | 2016-05-11 09:00 | 2016-05-11 18:00 | 1d | 0d |  | 24h | 9h | 2,550 | 2,550 | 750 |
| 81 | 1.5.5.1 | Acompanhar Projeto | manual | 1d | 2016-05-11 09:00 A | 2016-05-11 18:00 |  | 50% | 0.5d | 2016-05-11 09:00 | 2016-05-11 18:00 | 1d |  | Adriana; Beatriz; Gabriela; Tiago | 24h | 9h | 2,550 | 2,550 | 750 |
| 82 | 1.5.6 | **Gerência de Configuração** |  | 1.56d | 2016-06-22 09:00 A | 2016-06-23 14:30 |  | 50% | 0.78d | 2016-06-22 09:00 | 2016-06-23 14:30 | 1.56d | 0d |  | 14h | 9h | 1,050 | 1,050 | 675 |
| 83 | 1.5.6.1 | Elaborar Branch | manual | 0.56d | 2016-06-22 09:00 A | 2016-06-22 14:30 | 32 | 50% | 0.28d | 2016-06-22 09:00 | 2016-06-22 14:30 | 0.56d |  | Adriana; Tiago | 7h | 4.5h | 525 | 525 | 337.5 |
| 84 | 1.5.6.2 | Realizar Merge da Branch X para a Trunk | manual | 0.56d | 2016-06-23 09:00 A | 2016-06-23 14:30 | 32 | 50% | 0.28d | 2016-06-23 09:00 | 2016-06-23 14:30 | 0.56d |  | Adriana; Tiago | 7h | 4.5h | 525 | 525 | 337.5 |
