# Cronograma Drinks

Schedule from MS Project, 2016-05-11 to 2016-06-29, costs in R$.

## Calendars

- Padrão: Mon-Fri 09:00-12:00, 13:00-18:00; Sat-Sun off.

## Resources

| Resource | Rate |
| --- | --- |
| Adriana | 150 |
| Beatriz | 150 |
| Cliente |  |
| GP Externo | 200 |
| Gabriela | 150 |
| Tiago |  |
| Desenvolvedor de código | 100 |

## Schedule

| ID | WBS | Task | Type | Duration | Start | Finish | Predecessors | Total slack | Free slack | Resources | Work | Cost |
| --- | --- | --- | --- | --- | --- | --- | --- | --- | --- | --- | --- | --- |
| 1 | 1 | **Drinks** |  | 36d | 2016-05-11 | 2016-06-29 |  |  |  |  | 170.18h | 16,417.5 |
| 2 | 1.1 | **Prospecção** |  | 8d | 2016-05-11 | 2016-05-20 |  |  |  |  | 33h | 4,700 |
| 3 | 1.1.1 | **PTEC** |  | 6d | 2016-05-11 | 2016-05-18 |  |  |  |  | 30h | 4,350 |
| 4 | 1.1.1.1 | Estudar Domínio de Aplicação | manual | 0.25d | 2016-05-11 | 2016-05-11 |  |  |  | Gabriela | 2h | 300 |
| 5 | 1.1.1.2 | Reunir-se com fornecedor de Requisitos | manual | 0.5d | 2016-05-11 | 2016-05-12 | 4 |  |  | Gabriela | 5h | 750 |
| 6 | 1.1.1.3 | Redigir PTEC |  | 2.75d | 2016-05-12 | 2016-05-18 | 5 | 13.88d | 0d | Gabriela | 22h | 3,300 |
| 7 | 1.1.1.4 | Revisar Proposta Tecnica | manual | 0.12d | 2016-05-18 | 2016-05-18 | 6 |  |  | Tiago | 1h |  |
| 8 | 1.1.1.5 | Aprovar PTEC | milestone, manual | 0d | 2016-05-18 | 2016-05-18 | 7 |  |  | Cliente |  |  |
| 9 | 1.1.2 | **Estimativa Preliminar de Tamanho** |  | 1d | 2016-05-20 | 2016-05-20 |  |  |  |  | 2h | 350 |
| 10 | 1.1.2.1 | Estimar Tamanho do Projeto | manual | 0.12d | 2016-05-20 | 2016-05-20 | 8 |  |  | Adriana | 1h | 150 |
| 11 | 1.1.2.2 | Revisar Estimativa de tamanho do Projeto | manual | 0.12d | 2016-05-20 | 2016-05-20 | 10 |  |  | GP Externo | 1h | 200 |
| 12 | 1.1.3 | **Estimativa Preliminar de Cronograma e Orçamento** |  | 0.5d? | 2016-05-11 | 2016-05-11 |  |  |  |  | 1h |  |
| 13 | 1.1.3.1 | Elaborar Cronograma e Orçamento Preliminares | milestone, manual | 0d | 2016-05-20 | 2016-05-20 | 9 |  |  | Beatriz |  |  |
| 14 | 1.1.3.2 | Revisar cronograma e Orçamento Preliminares | manual | 0.12d | 2016-05-20 | 2016-05-20 | 13 |  |  | Tiago | 1h |  |
| 15 | 1.2 | **Análise** |  | 6d | 2016-05-20 | 2016-05-27 |  |  |  |  | 33h | 2,850 |
| 16 | 1.2.1 | **DRE** |  | 3.38d | 2016-05-20 | 2016-05-25 |  |  |  |  | 17h | 450 |
| 17 | 1.2.1.1 | Analisar PTEC | manual | 0.38d | 2016-05-20 | 2016-05-20 | 3 |  |  | Tiago | 2h |  |
| 18 | 1.2.1.2 | Redigir DRE | manual | 2.38d | 2016-05-20 | 2016-05-24 | 17 |  |  | Tiago | 12h |  |
| 19 | 1.2.1.3 | Revisar DRE | manual | 0.25d | 2016-05-24 | 2016-05-25 | 18 |  |  | Gabriela | 3h | 450 |
| 20 | 1.2.1.4 | Aprovar DRE | milestone, manual | 0d | 2016-05-25 | 2016-05-25 | 19 |  |  | Cliente |  |  |
| 21 | 1.2.2 | **Matriz de Rastreabilidade** |  | 3.25d | 2016-05-26 | 2016-05-31 |  | 0d |  |  | 16h | 2,400 |
| 22 | 1.2.2.1 | Analisar DRE | manual | 0.25d | 2016-05-26 | 2016-05-26 | 16 |  |  | Adriana | 2h | 300 |
| 23 | 1.2.2.2 | Desenvolver Matriz de Rastreabilidade | manual | 1.75d | 2016-05-26 | 2016-05-30 | 22 |  |  | Adriana | 13h | 1,950 |
| 24 | 1.2.2.3 | Revisar Matriz de Rastreabilidade | manual | 0.12d | 2016-05-30 | 2016-05-31 | 23 |  |  | Beatriz | 1h | 150 |

| ID | WBS | Task | Type | Duration | Start | Finish | Predecessors | Total slack | Resources | Work | Cost |
| --- | --- | --- | --- | --- | --- | --- | --- | --- | --- | --- | --- |
| 25 | 1.3 | **Projeto** |  | 18.75d | 2016-05-31 | 2016-06-25 |  | 0d |  | 82.17h | 7,267.5 |
| 26 | 1.3.1 | **Desenvolvimento de software** |  | 18.75d | 2016-05-31 | 2016-06-25 |  | 0d |  | 82.17h | 7,267.5 |
| 27 | 1.3.1.1 | Desenvolvimento do Código | manual | 9d | 2016-05-31 | 2016-06-13 | 24 |  | Desenvolvedor de código | 5.17h | 517.5 |
| 28 | 1.3.1.2 | Testes de Software | manual | 5.75d | 2016-06-16 | 2016-06-23 | 27 |  | Adriana | 45h | 6,750 |
| 29 | 1.3.1.3 | Criação e desenvolvimento da Baseline | manual | 3.75d | 2016-06-13 | 2016-06-16 | 27 |  | Tiago | 32h |  |
| 30 | 1.3.1.4 | Registro de Bugs | milestone, manual | 0d | 2016-06-25 | 2016-06-25 | 28 |  | Adriana |  |  |
| 31 | 1.4 | **Implementação** |  | 3d | 2016-06-26 | 2016-06-29 |  | 0d |  | 22h | 1,600 |
| 32 | 1.4.1 | Apresentação e esclarecimento do projeto ao cliente | milestone, manual | 0d | 2016-06-26 | 2016-06-26 | 26 |  | Adriana; Tiago |  |  |
| 33 | 1.4.2 | Feedback do Cliente | manual | 1d | 2016-06-27 | 2016-06-27 | 32 |  | Cliente | 6h |  |
| 34 | 1.4.3 | Corrção de Problemas | manual | 1d | 2016-06-28 | 2016-06-28 | 33 |  | Desenvolvedor de código | 8h | 800 |
| 35 | 1.4.4 | Assistência ao Cliente | manual | 1d | 2016-06-29 | 2016-06-29 | 34 |  | Desenvolvedor de código | 8h | 800 |
