# Cronograma Drinks

Schedule from MS Project, 2016-05-11 to 2016-06-29, costs in R$, A marks actual dates.

## Calendars

- Padrão: Mon-Fri 09:00-12:00, 13:00-18:00; Sat-Sun off.

## Resources

| Resource | Rate |
| --- | --- |
| Adriana | 150 |
| Beatriz | 150 |
| Cliente |  |
| GP Externo | 200 |
| Gabriela | 150 |
| Tiago |  |
| Desenvolvedor de código | 100 |

## Schedule

| ID | WBS | Task | Type | Duration | Start | Finish | Predecessors | Complete | Remaining | Actual start | Actual finish | Baseline start | Baseline finish | Baseline duration | Total slack | Resources | Work | Actual work | Cost | Baseline cost | Actual cost |
| --- | --- | --- | --- | --- | --- | --- | --- | --- | --- | --- | --- | --- | --- | --- | --- | --- | --- | --- | --- | --- | --- |
| 1 | 1 | **Drinks** |  | 36d | 2016-05-11 09:00 A | 2016-06-29 18:00 |  | 93% | 2.6d |  |  | 2016-05-11 09:00 | 2016-06-29 18:00 | 36d |  |  | 232.05h | 215.55h | 24,963.2 | 27,796.05 | 23,248.2 |
| 2 | 1.1 | **Prospecção** |  | 8d | 2016-05-11 09:00 A | 2016-05-20 18:30 |  | 98% | 0.14d |  |  | 2016-05-11 09:00 | 2016-05-20 18:00 | 8d | 0d |  | 28h | 27.5h | 4,025 | 4,700 | 3,950 |
| 3 | 1.1.1 | **PTEC** |  | 6d | 2016-05-11 09:00 A | 2016-05-18 18:00 |  | 100% |  |  | 2016-05-18 17:00 | 2016-05-11 09:00 | 2016-05-18 18:00 | 6d |  |  | 25h | 25h | 3,600 | 4,350 | 3,600 |
| 4 | 1.1.1.1 | Estudar Domínio de Aplicação | manual | 0.12d | 2016-05-11 09:00 A | 2016-05-11 15:00 A |  | 100% |  |  |  | 2016-05-11 09:00 | 2016-05-11 16:00 | 0.25d |  | Gabriela | 1h | 1h | 150 | 300 | 150 |
| 5 | 1.1.1.2 | Reunir-se com fornecedor de Requisitos | manual | 0.12d | 2016-05-11 16:00 A | 2016-05-12 12:00 A | 4 | 100% |  |  |  | 2016-05-11 16:00 | 2016-05-12 17:00 | 0.62d |  | Gabriela | 1h | 1h | 150 | 750 | 150 |
| 6 | 1.1.1.3 | Redigir PTEC |  | 2.75d | 2016-05-12 17:00 A | 2016-05-16 12:00 A | 5 | 100% |  |  |  | 2016-05-12 17:00 | 2016-05-16 12:00 | 2.75d |  | Gabriela | 22h | 22h | 3,300 | 3,300 | 3,300 |
| 7 | 1.1.1.4 | Revisar Proposta Tecnica | manual | 0.12d | 2016-05-18 16:00 A | 2016-05-18 17:00 A | 6 | 100% |  |  |  | 2016-05-18 16:00 | 2016-05-18 17:00 | 0.12d |  | Tiago | 1h | 1h |  |  |  |
| 8 | 1.1.1.5 | Aprovar PTEC | milestone, manual | 0d | 2016-05-18 17:00 A | 2016-05-18 17:00 A | 7 | 100% |  |  |  | 2016-05-18 17:00 | 2016-05-18 17:00 |  |  | Cliente |  |  |  |  |  |
| 9 | 1.1.2 | **Estimativa Preliminar de Tamanho** |  | 1d | 2016-05-20 09:00 A | 2016-05-20 18:00 |  | 100% |  |  | 2016-05-20 15:00 | 2016-05-20 09:00 | 2016-05-20 18:00 | 1d |  |  | 2h | 2h | 350 | 350 | 350 |
| 10 | 1.1.2.1 | Estimar Tamanho do Projeto | manual | 0.12d | 2016-05-20 09:00 A | 2016-05-20 10:00 A | 8 | 100% |  |  |  | 2016-05-20 09:00 | 2016-05-20 10:00 | 0.12d |  | Adriana | 1h | 1h | 150 | 150 | 150 |
| 11 | 1.1.2.2 | Revisar Estimativa de tamanho do Projeto | manual | 0.12d | 2016-05-20 14:00 A | 2016-05-20 15:00 A | 10 | 100% |  |  |  | 2016-05-20 14:00 | 2016-05-20 15:00 | 0.12d |  | GP Externo | 1h | 1h | 200 | 200 | 200 |
| 12 | 1.1.3 | **Estimativa Preliminar de Cronograma e Orçamento** |  | 1d | 2016-05-20 09:00 A | 2016-05-20 18:30 |  | 50% | 0.5d |  |  | 2016-05-11 09:00 | 2016-05-11 14:00 | 0.5d? | 0d |  | 1h | 0.5h | 75 |  |  |
| 13 | 1.1.3.1 | Elaborar Cronograma e Orçamento Preliminares | manual | 0.06d | 2016-05-20 18:00 A | 2016-05-20 18:30 | 9 |  | 0.06d |  |  | 2016-05-20 18:00 | 2016-05-20 18:00 |  |  | Beatriz | 0.5h |  | 75 |  |  |
| 14 | 1.1.3.2 | Revisar cronograma e Orçamento Preliminares | manual | 0.06d | 2016-05-20 09:00 A | 2016-05-20 09:30 A | 13 | 100% |  |  |  | 2016-05-20 09:00 | 2016-05-20 10:00 | 0.12d |  | Tiago | 0.5h | 0.5h |  |  |  |
| 15 | 1.2 | **Análise** |  | 6d | 2016-05-20 09:00 | 2016-05-27 18:00 |  | 93% | 0.4d | 2016-05-20 14:00 |  | 2016-05-20 09:00 | 2016-05-27 18:00 | 6d |  |  | 25h | 23h | 2,799.86 | 3,200 | 2,499.86 |
| 16 | 1.2.1 | **Documento de Requisitos** |  | 4d | 2016-05-20 09:00 | 2016-05-25 18:00 |  | 95% | 0.21d | 2016-05-20 14:00 |  | 2016-05-20 09:00 | 2016-05-25 18:00 | 4d |  |  | 16h | 15h | 1,449.83 | 1,700 | 1,299.83 |
| 17 | 1.2.1.1 | Reunir-se com o Cliente | manual | 0.9d | 2016-05-20 14:00 A | 2016-05-21 13:11 A |  | 100% |  |  |  | 2016-05-20 14:00 | 2016-05-23 15:00 | 1.12d |  | Tiago | 3h | 3h |  |  |  |
| 18 | 1.2.1.2 | Elaborar DRE | manual | 1.05d | 2016-05-24 17:00 A | 2016-05-25 07:25 A | 17 | 100% |  |  |  | 2016-05-24 17:00 | 2016-05-25 08:00 | 1.12d |  | Desenvolvedor de código | 10h | 10h | 999.83 | 1,400 | 999.83 |
| 19 | 1.2.1.3 | Revisar DRE | manual | 0.38d | 2016-05-25 13:00 A | 2016-05-25 16:00 | 18 | 67% | 0.12d |  |  | 2016-05-25 13:00 | 2016-05-25 15:00 | 0.25d |  | Beatriz | 3h | 2h | 450 | 300 | 300 |
| 20 | 1.2.1.4 | Submeter DRE para aprovação do Cliente | milestone, manual | 0d | 2016-05-25 15:00 A | 2016-05-25 15:00 A | 19 | 100% |  |  |  | 2016-05-25 15:00 | 2016-05-25 15:00 |  |  | Cliente |  |  |  |  |  |
| 21 | 1.2.2 | **Matriz de Rastreabilidade** |  | 3.25d | 2016-05-26 09:00 A | 2016-05-31 11:00 |  | 91% | 0.29d |  |  | 2016-05-26 09:00 | 2016-05-31 11:00 | 3.25d | 0d |  | 9h | 8h | 1,350.03 | 1,500 | 1,200.03 |
| 22 | 1.2.2.1 | Analisar DRE | manual | 0.38d | 2016-05-26 09:00 A | 2016-05-26 17:00 | 16 | 67% | 0.12d |  |  | 2016-05-26 09:00 | 2016-05-26 16:00 | 0.25d |  | Adriana | 3h | 2h | 450 | 300 | 300 |
| 23 | 1.2.2.2 | Desenvolver Matriz de Rastreabilidade | manual | 0.92d | 2016-05-26 16:00 A | 2016-05-30 10:23 A | 22 | 100% |  |  |  | 2016-05-26 16:00 | 2016-05-30 18:00 | 1.75d |  | Adriana | 4h | 4h | 600.03 | 900 | 600.03 |
| 24 | 1.2.2.3 | Revisar Matriz de Rastreabilidade | manual | 0.12d | 2016-05-30 18:00 | 2016-05-31 11:00 A | 23 | 100% |  | 2016-05-31 09:00 |  | 2016-05-31 09:00 | 2016-05-31 11:00 | 0.12d |  | Beatriz | 2h | 2h | 300 | 300 | 300 |

| ID | WBS | Task | Type | Duration | Start | Finish | Predecessors | Complete | Remaining | Actual start | Baseline start | Baseline finish | Baseline duration | Total slack | Resources | Work | Actual work | Cost | Baseline cost | Actual cost |
| --- | --- | --- | --- | --- | --- | --- | --- | --- | --- | --- | --- | --- | --- | --- | --- | --- | --- | --- | --- | --- |
| 25 | 1.3 | **Projeto** |  | 6.62d | 2016-05-31 13:00 A | 2016-06-09 08:00 |  | 94% | 0.38d |  | 2016-05-31 13:00 | 2016-06-08 18:00 | 6.62d | 0d |  | 10h | 9h | 1,350 | 2,700 | 1,350 |
| 26 | 1.3.1 | **Diagrama de Classes** |  | 6.62d | 2016-05-31 13:00 A | 2016-06-09 08:00 |  | 94% | 0.38d |  | 2016-05-31 13:00 | 2016-06-08 18:00 | 6.62d | 0d |  | 10h | 9h | 1,350 | 2,700 | 1,350 |
| 27 | 1.3.1.1 | Elaborar Diagrama de Classes | manual | 1.8d | 2016-05-31 13:00 A | 2016-06-02 10:22 A | 24 | 100% |  |  | 2016-05-31 13:00 | 2016-06-04 15:00 | 4.25d |  | Gabriela | 7h | 7h | 1,050 | 2,400 | 1,050 |
| 28 | 1.3.1.2 | Revisar Diagrama de Classes | manual | 0.25d | 2016-06-08 08:00 A | 2016-06-08 10:00 A | 27 | 100% |  |  | 2016-06-08 08:00 | 2016-06-08 10:00 | 0.25d |  | Adriana | 2h | 2h | 300 | 300 | 300 |
| 29 | 1.3.1.3 | Atualizar MRB | manual | 0.12d | 2016-06-09 07:00 A | 2016-06-09 08:00 | 27 |  | 0.12d |  | 2016-06-08 18:00 | 2016-06-08 18:00 |  |  | Tiago | 1h |  |  |  |  |
| 30 | 1.4 | **Modelo Entidade de Relacionamento** |  | 2d | 2016-06-09 07:00 A | 2016-06-11 10:30 |  | 92% | 0.17d |  | 2016-06-09 07:00 | 2016-06-11 10:00 | 2d | 0d |  | 8.5h | 7h | 915 | 750 | 750 |
| 31 | 1.4.1 | Elaborar MER | manual | 0.45d | 2016-06-09 07:00 A | 2016-06-09 10:36 | 26 | 72% | 0.12d |  | 2016-06-09 07:00 | 2016-06-09 10:00 | 0.38d |  | Adriana; Tiago | 6h | 5h | 540 | 450 | 450 |
| 32 | 1.4.2 | Revisar MER | manual | 1.81d | 2016-06-09 13:00 A | 2016-06-11 10:30 | 31 | 97% | 0.06d |  | 2016-06-09 13:00 | 2016-06-11 10:00 | 1.75d |  | Gabriela | 2.5h | 2h | 375 | 300 | 300 |
| 33 | 1.5 | **Implementação** |  | 31.31d | 2016-05-11 09:00 A | 2016-06-23 11:30 |  | 92% | 2.57d |  | 2016-05-11 09:00 | 2016-06-23 14:30 | 31.56d | 0d |  | 160.55h | 149.05h | 15,873.33 | 16,446.05 | 14,698.33 |
| 34 | 1.5.1 | **Implementação 01** |  | 2.62d | 2016-06-10 13:00 A | 2016-06-14 18:00 |  | 83% | 0.44d |  | 2016-06-10 13:00 | 2016-06-15 12:00 | 3d | 0d |  | 27h | 20.5h | 3,175 | 2,125 | 2,250 |
| 35 | 1.5.1.1 | **Implementação RFC01** |  | 2.12d | 2016-06-10 13:00 A | 2016-06-14 14:00 |  | 94% | 0.12d |  | 2016-06-10 13:00 | 2016-06-14 10:00 | 1.75d | 0d |  | 19h | 18h | 2,050 | 1,600 | 1,950 |
| 36 | 1.5.1.1.1 | Implementar RFS01 | manual | 0.5d | 2016-06-10 13:00 A | 2016-06-10 17:00 A | 32 | 100% |  |  | 2016-06-10 13:00 | 2016-06-10 17:00 | 0.5d |  | Desenvolvedor de código | 4h | 4h | 400 | 400 | 400 |
| 37 | 1.5.1.1.2 | Implementar RFS02 | manual | 0.75d | 2016-06-10 17:00 A | 2016-06-11 15:00 | 36 | 83% | 0.12d |  | 2016-06-10 17:00 | 2016-06-11 14:00 | 0.62d |  | Desenvolvedor de código | 5h | 4h | 500 | 400 | 400 |
| 38 | 1.5.1.1.3 | Implementar RFS03 | manual | 0.25d | 2016-06-13 13:00 A | 2016-06-13 15:00 A | 37 | 100% |  |  | 2016-06-13 13:00 | 2016-06-13 17:00 | 0.5d |  | Desenvolvedor de código | 2h | 2h | 200 | 400 | 200 |
| 39 | 1.5.1.1.4 | Implementar RFS04 | manual | 0.62d | 2016-06-13 17:00 A | 2016-06-14 14:00 A | 38 | 100% |  |  | 2016-06-13 17:00 | 2016-06-14 10:00 | 0.25d |  | Desenvolvedor de código; Beatriz | 8h | 8h | 950 | 400 | 950 |
| 40 | 1.5.1.2 | **Implementação RFC05** |  | 2.62d | 2016-06-10 13:00 | 2016-06-14 18:00 |  | 36% | 1.67d | 2016-06-11 10:00 | 2016-06-10 13:00 | 2016-06-14 18:00 | 2.62d |  |  | 7h | 1.5h | 1,050 | 225 | 225 |
| 41 | 1.5.1.2.1 | Implementar RFS013 | manual | 0.69d | 2016-06-11 10:00 A | 2016-06-13 10:30 | 32 | 36% | 0.44d |  | 2016-06-11 10:00 | 2016-06-11 16:00 | 0.25d |  | Gabriela | 7h | 1.5h | 1,050 | 225 | 225 |
| 42 | 1.5.1.3 | **Teste** |  | 1.62d | 2016-06-13 10:00 A | 2016-06-14 16:00 A |  | 100% |  |  | 2016-06-13 10:00 | 2016-06-15 12:00 | 2.25d |  |  | 1h | 1h | 75 | 300 | 75 |
| 43 | 1.5.1.3.1 | Teste RFC01 | manual | 0.25d | 2016-06-14 14:00 A | 2016-06-14 16:00 A | 39 | 100% |  |  | 2016-06-14 14:00 | 2016-06-15 12:00 | 0.88d |  | Adriana | 0.5h | 0.5h | 75 | 300 | 75 |
| 44 | 1.5.1.3.2 | Teste RFC05 | manual | 0.28d | 2016-06-13 10:00 A | 2016-06-13 13:15 A | 41 | 100% |  |  | 2016-06-13 10:00 | 2016-06-14 09:00 | 0.88d |  | Tiago | 0.5h | 0.5h |  |  |  |
| 45 | 1.5.2 | **Implementação 02** |  | 1.94d | 2016-06-11 10:00 A | 2016-06-14 17:30 |  | 95% | 0.1d |  | 2016-06-11 10:00 | 2016-06-15 12:00 | 2.38d | 0d |  | 20.55h | 17.55h | 1,225 | 1,200 | 1,225 |
| 46 | 1.5.2.1 | **Implementação RFC06** |  | 0.12d | 2016-06-11 10:00 A | 2016-06-13 10:00 |  | 88% | 0.02d |  | 2016-06-11 10:00 | 2016-06-11 18:00 |  | 0d |  | 10h | 7h |  |  |  |
| 47 | 1.5.2.1.1 | Implementar RFS014 | manual | 1d | 2016-06-11 10:00 A | 2016-06-13 10:00 | 32 | 88% | 0.12d |  | 2016-06-11 10:00 | 2016-06-11 18:00 | 0.88d |  | Tiago | 10h | 7h |  |  |  |
| 48 | 1.5.2.2 | **Implementação RFC08** |  | 0.64d | 2016-06-13 13:00 A | 2016-06-14 09:09 A |  | 100% |  |  | 2016-06-13 13:00 | 2016-06-14 12:00 | 1d |  |  | 9.55h | 9.55h | 1,075 | 600 | 1,075 |
| 49 | 1.5.2.2.1 | Implementar RFS018 | manual | 0.64d | 2016-06-13 13:00 A | 2016-06-14 09:09 A | 32 | 100% |  |  | 2016-06-13 13:00 | 2016-06-14 12:00 | 0.62d |  | Beatriz; Desenvolvedor de código; Gabriela | 9.55h | 9.55h | 1,075 | 600 | 1,075 |

| ID | WBS | Task | Type | Duration | Start | Finish | Predecessors | Complete | Remaining | Actual start | Actual finish | Baseline start | Baseline finish | Baseline duration | Total slack | Resources | Work | Actual work | Cost | Baseline cost | Actual cost |
| --- | --- | --- | --- | --- | --- | --- | --- | --- | --- | --- | --- | --- | --- | --- | --- | --- | --- | --- | --- | --- | --- |
| 50 | 1.5.2.3 | **Teste** |  | 1.44d | 2016-06-13 14:00 A | 2016-06-14 17:30 A |  | 100% |  |  |  | 2016-06-13 14:00 | 2016-06-15 12:00 | 1.88d |  |  | 1h | 1h | 150 | 600 | 150 |
| 51 | 1.5.2.3.1 | Teste RFC06 | manual | 0.25d | 2016-06-13 14:00 A | 2016-06-13 16:00 A | 47 | 100% |  |  |  | 2016-06-13 14:00 | 2016-06-14 12:00 | 0.88d |  | Adriana | 0.5h | 0.5h | 75 | 300 | 75 |
| 52 | 1.5.2.3.2 | Teste RFC08 | manual | 0.56d | 2016-06-14 13:00 A | 2016-06-14 17:30 A | 49 | 100% |  |  |  | 2016-06-14 13:00 | 2016-06-15 12:00 | 1d |  | Beatriz | 0.5h | 0.5h | 75 | 300 | 75 |
| 53 | 1.5.3 | **Implementação 03** |  | 3.56d | 2016-06-13 14:00 A | 2016-06-17 09:30 |  | 68% | 1.15d |  |  | 2016-05-13 09:00 | 2016-06-17 11:00 | 25.25d | 0d |  | 24h | 22h | 2,075 | 5,121.05 | 1,825 |
| 54 | 1.5.3.1 | **Implementação RFC04** |  | 1d | 2016-06-16 09:00 A | 2016-06-17 08:00 |  | 50% | 0.5d |  |  | 2016-06-16 09:00 | 2016-06-16 18:00 | 1d | 0d |  | 9h | 8h | 900 | 800 | 800 |
| 55 | 1.5.3.1.1 | Implementar RFS12 | manual | 2d | 2016-06-16 09:00 A | 2016-06-17 08:00 | 67 | 50% | 1d |  |  | 2016-06-16 09:00 | 2016-06-16 18:00 | 1d |  | Desenvolvedor de código | 9h | 8h | 900 | 800 | 800 |
| 56 | 1.5.3.2 | **Implementação RFC09** |  | 0.75d | 2016-06-13 14:00 A | 2016-06-14 11:00 |  | 91% | 0.07d |  |  | 2016-06-13 14:00 | 2016-06-14 10:00 | 0.62d | 0d |  | 14h | 13h | 1,050 | 900 | 900 |
| 57 | 1.5.3.2.1 | Implementar RFS19 | manual | 0.75d | 2016-06-13 14:00 A | 2016-06-14 11:00 | 67 | 83% | 0.12d |  |  | 2016-06-13 14:00 | 2016-06-14 10:00 | 0.62d |  | Adriana | 7h | 6h | 1,050 | 900 | 900 |
| 58 | 1.5.3.2.2 | Implementar RFS20 | manual | 0.62d | 2016-06-13 14:00 A | 2016-06-14 10:00 A | 67 | 100% |  |  |  | 2016-06-13 14:00 | 2016-06-14 10:00 | 0.62d |  | Tiago | 7h | 7h |  |  |  |
| 59 | 1.5.3.3 | **Teste** |  | 2.69d | 2016-06-14 13:00 A | 2016-06-17 09:30 A |  | 100% |  |  |  | 2016-06-13 14:00 | 2016-06-17 11:00 | 3.75d |  |  | 1h | 1h | 125 | 2,600 | 125 |
| 60 | 1.5.3.3.1 | Teste RFC04 | manual | 0.06d | 2016-06-17 09:00 A | 2016-06-17 09:30 A | 55 | 100% |  |  |  | 2016-06-17 09:00 | 2016-06-17 11:00 | 0.25d |  | Desenvolvedor de código | 0.5h | 0.5h | 50 | 200 | 50 |
| 61 | 1.5.3.3.2 | Teste RFC09 | manual | 0.06d | 2016-06-14 13:00 A | 2016-06-14 15:30 A | 58 | 100% |  |  |  | 2016-06-14 13:00 | 2016-06-14 17:00 | 0.25d |  | Beatriz | 0.5h | 0.5h | 75 | 300 | 75 |
| 62 | 1.5.4 | **Implementação 04** |  | 28d | 2016-05-13 09:00 | 2016-06-21 18:00 A |  | 100% |  | 2016-06-11 10:30 |  | 2016-06-14 17:00 | 2016-06-21 18:00 | 5.12d |  |  | 51h | 51h | 5,708.33 | 4,400 | 5,708.33 |
| 63 | 1.5.4.1 | **Implementação RFC02** |  | 25d | 2016-05-13 09:00 | 2016-06-16 18:00 |  | 100% |  | 2016-06-11 10:30 | 2016-06-15 17:00 | 2016-05-13 09:00 | 2016-06-16 18:00 | 25d |  |  | 15h | 15h | 1,883.33 | 821.05 | 1,883.33 |
| 64 | 1.5.4.1.1 | Implementar RFS05 | manual | 0.5d | 2016-06-15 13:00 A | 2016-06-15 17:00 A | 52 | 100% |  |  |  | 2016-06-15 13:00 | 2016-06-15 13:00 | 0d |  | Gabriela | 4h | 4h | 600 |  | 600 |
| 65 | 1.5.4.1.2 | Implementar RFS06 |  | 2.88d | 2016-06-11 10:30 A | 2016-06-13 14:30 A | 32 | 100% |  |  |  | 2016-06-11 10:00 | 2016-06-13 06:00 | 1.62d |  | Desenvolvedor de código | 2h | 2h | 200 | 600 | 200 |
| 66 | 1.5.4.1.3 | Implementar RFS07 |  | 1d | 2016-06-13 08:00 A | 2016-06-13 17:00 A | 32 | 100% |  |  |  | 2016-06-13 08:00 | 2016-06-13 17:00 | 1d |  | Adriana; Tiago | 2h | 2h | 33.33 | 221.05 | 33.33 |
| 67 | 1.5.4.1.4 | Implementar RFS08 |  | 0.88d | 2016-06-11 10:30 A | 2016-06-11 17:30 A | 32 | 100% |  |  |  | 2016-06-11 10:00 | 2016-06-11 18:00 | 0.88d |  | Beatriz | 7h | 7h | 1,050 |  | 1,050 |
| 68 | 1.5.4.2 | **Implementação RFC03** |  | 1.5d | 2016-06-14 17:00 A | 2016-06-16 12:00 A |  | 100% |  |  |  | 2016-06-14 17:00 | 2016-06-16 12:00 | 1.5d |  |  | 24h | 24h | 2,000 | 1,000 | 2,000 |
| 69 | 1.5.4.2.1 | Implementar RFS09 | manual | 0.5d | 2016-06-14 17:00 A | 2016-06-15 12:00 A | 61 | 100% |  |  |  | 2016-06-14 17:00 | 2016-06-15 12:00 | 0.5d |  | Tiago | 8h | 8h |  |  |  |
| 70 | 1.5.4.2.2 | Implementar RFS10 | manual | 0.5d | 2016-06-15 14:00 A | 2016-06-15 18:00 A | 69 | 100% |  |  |  | 2016-06-15 14:00 | 2016-06-15 18:00 | 0.5d |  | Desenvolvedor de código | 8h | 8h | 800 | 400 | 800 |
| 71 | 1.5.4.2.3 | Implementar RFS11 |  | 0.5d | 2016-06-16 08:00 A | 2016-06-16 12:00 A | 70 | 100% |  |  |  | 2016-06-16 08:00 | 2016-06-16 12:00 | 0.5d |  | Adriana | 8h | 8h | 1,200 | 600 | 1,200 |
| 72 | 1.5.4.3 | **Implementação RFC07** |  | 2.75d | 2016-06-14 17:00 A | 2016-06-17 15:00 A |  | 100% |  |  |  | 2016-06-14 17:00 | 2016-06-17 15:00 | 2.75d |  |  | 10.5h | 10.5h | 1,575 | 2,250 | 1,575 |
| 73 | 1.5.4.3.1 | Implementar RFS15 | manual | 0.62d | 2016-06-14 17:00 A | 2016-06-15 17:00 A | 61 | 100% |  |  |  | 2016-06-14 17:00 | 2016-06-15 17:00 | 0.62d |  | Gabriela | 3h | 3h | 450 | 750 | 450 |
| 74 | 1.5.4.3.2 | Implementar RFS16 | manual | 0.62d | 2016-06-15 16:00 A | 2016-06-16 16:00 A | 73 | 100% |  |  |  | 2016-06-15 16:00 | 2016-06-16 16:00 | 0.62d |  | Gabriela | 3.5h | 3.5h | 525 | 750 | 525 |
| 75 | 1.5.4.3.3 | Implementar RFS17 | manual | 0.5d | 2016-06-16 16:00 A | 2016-06-17 15:00 A | 74 | 100% |  |  |  | 2016-06-16 16:00 | 2016-06-17 15:00 | 0.5d |  | Beatriz | 4h | 4h | 600 | 750 | 600 |

| ID | WBS | Task | Type | Duration | Start | Finish | Predecessors | Complete | Baseline start | Baseline finish | Baseline duration | Resources | Work | Actual work | Cost | Baseline cost | Actual cost |
| --- | --- | --- | --- | --- | --- | --- | --- | --- | --- | --- | --- | --- | --- | --- | --- | --- | --- |
| 76 | 1.5.4.4 | **Teste** |  | 6.5d | 2016-06-13 14:00 A | 2016-06-21 18:00 A |  | 100% | 2016-06-21 09:00 | 2016-06-21 18:00 | 1d |  | 1.5h | 1.5h | 250 | 1,150 | 250 |
| 77 | 1.5.4.4.1 | Teste RFC02 | manual | 1.5d | 2016-06-13 14:00 A | 2016-06-14 18:00 A | 67 | 100% | 2016-06-13 14:00 | 2016-06-14 18:00 | 1.5d | Gabriela | 0.5h | 0.5h | 75 | 2,100 | 75 |
| 78 | 1.5.4.4.2 | Teste RFC03 | manual | 0.25d | 2016-06-21 09:00 A | 2016-06-21 15:00 A | 71 | 100% | 2016-06-21 09:00 | 2016-06-21 15:00 | 0.25d | GP Externo | 0.5h | 0.5h | 100 | 400 | 100 |
| 79 | 1.5.4.4.3 | TesteRFC07 | manual | 0.62d | 2016-06-21 09:00 A | 2016-06-21 18:00 A | 75 | 100% | 2016-06-21 09:00 | 2016-06-21 18:00 | 0.62d | Beatriz | 0.5h | 0.5h | 75 | 750 | 75 |
| 80 | 1.5.5 | **Monitoramento e Controle** |  | 1d | 2016-05-11 09:00 A | 2016-05-11 18:00 A |  | 100% | 2016-05-11 09:00 | 2016-05-11 18:00 | 1d |  | 24h | 24h | 2,550 | 2,550 | 2,550 |
| 81 | 1.5.5.1 | Acompanhar Projeto | manual | 1d | 2016-05-11 09:00 A | 2016-05-11 18:00 A |  | 100% | 2016-05-11 09:00 | 2016-05-11 18:00 | 1d | Adriana; Beatriz; Gabriela; Tiago | 24h | 24h | 2,550 | 2,550 | 2,550 |
| 82 | 1.5.6 | **Gerência de Configuração** |  | 1.31d | 2016-06-22 09:00 A | 2016-06-23 11:30 A |  | 100% | 2016-06-22 09:00 | 2016-06-23 14:30 | 1.56d |  | 14h | 14h | 1,140 | 1,050 | 1,140 |
| 83 | 1.5.6.1 | Elaborar Branch | manual | 0.56d | 2016-06-22 09:00 A | 2016-06-22 14:30 A | 32 | 100% | 2016-06-22 09:00 | 2016-06-22 14:30 | 0.56d | Adriana; Tiago | 9h | 9h | 765 | 525 | 765 |
| 84 | 1.5.6.2 | Realizar Merge da Branch X para a Trunk | manual | 0.31d | 2016-06-23 09:00 A | 2016-06-23 11:30 A | 32 | 100% | 2016-06-23 09:00 | 2016-06-23 14:30 | 0.56d | Adriana; Tiago | 5h | 5h | 375 | 525 | 375 |
